# СкрябинМВ_СДР

Schedule from MS Project XML, 2025-12-15 to 2026-09-08, costs in ₽.

## Calendars

- Стандартный: Mon-Fri 09:00-13:00, 14:00-18:00; Sat-Sun off.
- : Mon-Fri 09:00-13:00, 14:00-18:00; Sat-Sun off.

## Resources

| Resource | Unit | Rate |
| --- | --- | --- |
| QA-инженер |  | 1700 |
| Backend-разработчик |  | 1700 |
| Frontend-разработчик |  | 2100 |
| ML-инженер |  | 1600 |
| DevOps-инженер |  | 2500 |
| Менеджер проекта |  | 1400 |
| API Альфа-Банка |  |  |
| Данные для обучения (Альфа-Банк) |  |  |
| Облачный сервис Kubernets (Yandex Cloud) |  | 4000 |
| Тестовый сервер | 1 сервер | 5000 |
| PROD-сервер | 1 сервер | 14000 |
| Управленческий резерв по VaR 95 |  |  |
| Дополнительный буфер до границы сценария |  |  |

## Schedule

| ID | WBS | Task | Type | Duration | Start | Finish | Predecessors | Total slack | Resources | Work | Cost |
| --- | --- | --- | --- | --- | --- | --- | --- | --- | --- | --- | --- |
| 1 | 1 | **Финансовый аналитический сервис Alf (Альф)** |  | 192d | 2025-12-15 | 2026-09-08 |  |  |  | 4356.16h | 8,358,360 |
| 2 | 1.1 | **Инициация и планирование проекта** |  | 37d | 2025-12-15 | 2026-02-03 |  |  |  | 296h | 414,400 |
| 3 | 1.1.1 | **Разработать Устав проекта** |  | 20d | 2025-12-15 | 2026-01-09 |  |  |  | 160h | 224,000 |
| 4 | 1.1.1.1 | Собрать исходные данные для Устава |  | 5d | 2025-12-15 | 2025-12-19 |  |  | Менеджер проекта | 40h | 56,000 |
| 5 | 1.1.1.2 | Разработать черновую версию Устава |  | 12d | 2025-12-22 | 2026-01-06 | 4 |  | Менеджер проекта | 96h | 134,400 |
| 6 | 1.1.1.3 | Провести согласование и подписать Устав |  | 3d | 2026-01-07 | 2026-01-09 | 5 |  | Менеджер проекта | 24h | 33,600 |
| 7 | 1.1.2 | **Планирование проекта** |  | 9d | 2026-01-12 | 2026-01-22 |  |  |  | 72h | 100,800 |
| 8 | 1.1.2.1 | Сформировать и задокументировать реестр требований |  | 3d | 2026-01-12 | 2026-01-14 | 6 |  | Менеджер проекта | 24h | 33,600 |
| 9 | 1.1.2.2 | Согласовать и утвердить реестр требований |  | 6d | 2026-01-15 | 2026-01-22 | 8 |  | Менеджер проекта | 48h | 67,200 |
| 10 | 1.1.3 | **Разработать детальный план-график** |  | 8d | 2026-01-23 | 2026-02-03 |  |  |  | 64h | 89,600 |
| 11 | 1.1.3.1 | Оценить длительность и трудозатраты работ |  | 4d | 2026-01-23 | 2026-01-28 | 9 |  | Менеджер проекта | 32h | 44,800 |
| 12 | 1.1.3.2 | Назначить ресурсы и определить зависимости |  | 4d | 2026-01-29 | 2026-02-03 | 11 |  | Менеджер проекта | 32h | 44,800 |
| 13 | 1.1.3.3 | План проекта утверждён | milestone | 0d | 2026-02-03 | 2026-02-03 | 4, 5, 6, 8, 9, 11, 12 | 155d |  |  |  |
| 14 | 1.2 | **Создать пользовательский интерфейс** |  | 14d | 2026-02-04 | 2026-02-23 |  | 50d |  | 224h | 458,000 |
| 15 | 1.2.1 | **Создание UI** |  | 7d | 2026-02-04 | 2026-02-12 |  | 50d |  | 56h | 117,600 |
| 16 | 1.2.1.1 | Создать UI |  | 4d | 2026-02-04 | 2026-02-09 | 12 | 50d | Frontend-разработчик | 32h | 67,200 |
| 17 | 1.2.1.2 | Адаптировать UI для голосового помощника Alf |  | 3d | 2026-02-10 | 2026-02-12 | 16 | 50d | Frontend-разработчик | 24h | 50,400 |
| 18 | 1.2.2 | **Адаптация интерфейса к голосовому вводу** |  | 7d | 2026-02-13 | 2026-02-23 |  | 141d |  | 112h | 212,800 |
| 19 | 1.2.2.1 | Добавить обработку голосовых запросов |  | 7d | 2026-02-13 | 2026-02-23 | 17 | 141d | Backend-разработчик | 56h | 95,200 |
| 20 | 1.2.2.2 | Добавить окно ответов с рекомендациями |  | 7d | 2026-02-13 | 2026-02-23 | 17 | 141d | Frontend-разработчик | 56h | 117,600 |
| 21 | 1.2.3 | **Сделать веб-панель пользователя** |  | 7d | 2026-02-13 | 2026-02-23 |  | 50d |  | 56h | 127,600 |
| 22 | 1.2.3.1 | Сделать окно с финансовыми дашбордами и инфографикой |  | 3d | 2026-02-13 | 2026-02-17 | 17 | 50d | Frontend-разработчик; Тестовый сервер [1 1 сервер] | 24h | 55,400 |
| 23 | 1.2.3.2 | Добавить опцию настроек бюджета |  | 4d | 2026-02-18 | 2026-02-23 | 22 | 50d | Frontend-разработчик; Тестовый сервер [1 1 сервер] | 32h | 72,200 |
| 24 | 1.2.3.3 | Разработка UI завершена | milestone | 0d | 2026-02-23 | 2026-02-23 | 16, 17, 19, 20, 22, 23 | 141d |  |  |  |

| ID | WBS | Task | Type | Duration | Start | Finish | Predecessors | Total slack | Resources | Work | Cost |
| --- | --- | --- | --- | --- | --- | --- | --- | --- | --- | --- | --- |
| 25 | 1.3 | **Бэкенд-сервис** |  | 57d | 2026-02-04 | 2026-04-23 |  | 3d |  | 512h | 858,600 |
| 26 | 1.3.1 | **Проектирование backend-архитектуры** |  | 57d | 2026-02-04 | 2026-04-23 |  | 3d |  | 512h | 858,600 |
| 27 | 1.3.1.1 | Анализ функциональных и нефункциональных требований |  | 7d | 2026-02-04 | 2026-02-12 | 12 | 3d | Менеджер проекта; Backend-разработчик | 112h | 173,600 |
| 28 | 1.3.1.2 | Разработка backend-архитектуры сервиса |  | 50d | 2026-02-13 | 2026-04-23 | 27 | 7d | Backend-разработчик; Тестовый сервер [1 1 сервер] | 400h | 685,000 |
| 29 | 1.3.1 .3 | Разработка backend-архитектуры завершена | milestone | 0d | 2026-04-23 | 2026-04-23 | 27, 28 | 98d |  |  |  |
| 30 | 1.4 | **ML модуль** |  | 35d | 2026-02-04 | 2026-03-24 |  |  |  | 280h | 453,000 |
| 31 | 1.4.1 | **Обучение модели** |  | 35d | 2026-02-04 | 2026-03-24 |  |  |  | 280h | 453,000 |
| 32 | 1.4.1.1 | Обучить модель классификации транзакций |  | 30d | 2026-02-04 | 2026-03-17 | 12, 97 |  | ML-инженер; Данные для обучения (Альфа-Банк) | 240h | 384,000 |
| 33 | 1.4.1.2 | Оценить качество обучения |  | 5d | 2026-03-18 | 2026-03-24 | 32 |  | ML-инженер; Данные для обучения (Альфа-Банк); Тестовый сервер [1 1 сервер] | 40h | 69,000 |
| 34 | 1.4.1 .3 | ML-модуль готов | milestone | 0d | 2026-03-24 | 2026-03-24 | 32, 33 | 120d |  |  |  |
| 35 | 1.5 | **Создание системы хранения данных** |  | 54d | 2026-02-13 | 2026-04-29 |  | 3d |  | 584h | 1,036,800 |
| 36 | 1.5.1 | **База данных пользователей** |  | 21d | 2026-02-13 | 2026-03-13 |  | 3d |  | 168h | 304,600 |
| 37 | 1.5.1.1 | Реализовать хранение профиля пользователя |  | 7d | 2026-02-13 | 2026-02-23 | 27, 12, 97 | 3d | Backend-разработчик; Облачный сервис Kubernets (Yandex Cloud); Тестовый сервер [1 1 сервер] | 56h | 104,200 |
| 38 | 1.5.1.2 | Реализовать хранение и импорт истории транзакций |  | 7d | 2026-02-24 | 2026-03-04 | 37, 97 | 3d | Backend-разработчик; Тестовый сервер [1 1 сервер] | 56h | 100,200 |
| 39 | 1.5.1.3 | Сохранение метаданных финансового поведения пользователя |  | 7d | 2026-03-05 | 2026-03-13 | 38 | 3d | API Альфа-Банка; Backend-разработчик; Тестовый сервер [1 1 сервер] | 56h | 100,200 |
| 40 | 1.5.1 .4 | База данных пользователей разработана | milestone | 0d | 2026-03-13 | 2026-03-13 | 37, 38, 39 | 127d |  |  |  |
| 41 | 1.5.2 | **Механизмы защиты данных** |  | 14d | 2026-03-16 | 2026-04-02 |  | 3d |  | 112h | 200,400 |
| 42 | 1.5.2.1 | Реализовать шифрование хранения данных |  | 7d | 2026-03-16 | 2026-03-24 | 39 | 3d | Backend-разработчик; Тестовый сервер [1 1 сервер] | 56h | 100,200 |
| 43 | 1.5.2 .2 | Реализовать логирование операций |  | 7d | 2026-03-25 | 2026-04-02 | 42 | 3d | Backend-разработчик; Тестовый сервер [1 1 сервер] | 56h | 100,200 |
| 44 | 1.5.2 .3 | База данных сервиса готова к работе | milestone | 0d | 2026-04-02 | 2026-04-02 | 42, 43 | 113d |  |  |  |
| 45 | 1.5.3 | **Бэкапы и отказоустойчивость** |  | 19d | 2026-04-03 | 2026-04-29 |  | 3d |  | 304h | 531,800 |
| 46 | 1.5.3.1 | Создать механизм репликации данных |  | 7d | 2026-04-03 | 2026-04-13 | 43 | 3d | Backend-разработчик; QA-инженер; Тестовый сервер [1 1 сервер] | 112h | 195,400 |
| 47 | 1.5.3.2 | Провести мониторинг |  | 5d | 2026-04-14 | 2026-04-20 | 46 | 3d | Backend-разработчик; QA-инженер; Тестовый сервер [1 1 сервер] | 80h | 141,000 |
| 48 | 1.5.3.3 | Создать механизм восстановления после сбоев |  | 7d | 2026-04-21 | 2026-04-29 | 47 | 3d | Backend-разработчик; QA-инженер; Тестовый сервер [1 1 сервер] | 112h | 195,400 |
| 49 | 1.5.3 .4 | Механизмы отказоустойчивости готовы | milestone | 0d | 2026-04-29 | 2026-04-29 | 46, 47, 48 | 94d |  |  |  |

| ID | WBS | Task | Type | Duration | Start | Finish | Predecessors | Total slack | Resources | Work | Cost |
| --- | --- | --- | --- | --- | --- | --- | --- | --- | --- | --- | --- |
| 50 | 1.6 | **Интеграция сервиса с голосовым помощником Alf** |  | 48d | 2026-02-13 | 2026-04-21 |  | 9d |  | 632h | 1,148,800 |
| 51 | 1.6.1 | **Интеграция с API** |  | 27d | 2026-02-13 | 2026-03-23 |  | 9d |  | 352h | 640,400 |
| 52 | 1.6.1.1 | Реализовать совместимость с Alfa API |  | 10d | 2026-02-13 | 2026-02-26 | 12, 27 | 9d | API Альфа-Банка; Backend-разработчик | 80h | 136,000 |
| 53 | 1.6.1.2 | Реализовать совместимость с внутренними Alf Mobile API’s |  | 10d | 2026-02-27 | 2026-03-12 | 52, 97 | 9d | API Альфа-Банка; Frontend-разработчик; QA-инженер; Тестовый сервер [1 1 сервер] | 160h | 309,000 |
| 54 | 1.6.1 .3 | Провести проверку совместимости |  | 7d | 2026-03-13 | 2026-03-23 | 53 | 9d | Backend-разработчик; QA-инженер; Тестовый сервер [1 1 сервер] | 112h | 195,400 |
| 55 | 1.6.1 .4 | Интеграция с API Альфа-Банка прошла успешно | milestone | 0d | 2026-03-23 | 2026-03-23 | 52, 53, 54 | 121d |  |  |  |
| 56 | 1.6.2 | **Интеграция с БД Альфа-Банка** |  | 21d | 2026-03-24 | 2026-04-21 |  | 9d |  | 280h | 508,400 |
| 57 | 1.6.2.1 | Реализовать передачу и хранение аналитики |  | 14d | 2026-03-24 | 2026-04-10 | 54 | 9d | API Альфа-Банка; Frontend-разработчик; Тестовый сервер [1 1 сервер] | 112h | 240,200 |
| 58 | 1.6.2.2 | Протестировать совместимость |  | 7d | 2026-04-13 | 2026-04-21 | 57 | 9d | ML-инженер; QA-инженер; Менеджер проекта; Тестовый сервер [1 1 сервер] | 168h | 268,200 |
| 59 | 1.6.2 .3 | Интеграция с БД Альфа-Банка успешно завершена | milestone | 0d | 2026-04-21 | 2026-04-21 | 57, 58 | 100d |  |  |  |
| 60 | 1.7 | **Система тестирования и аналитики** |  | 56d | 2026-03-25 | 2026-06-10 |  |  |  | 448h | 835,400 |
| 61 | 1.7.1 | **Мониторинг ML моделей** |  | 29d | 2026-03-25 | 2026-05-04 |  |  |  | 232h | 441,200 |
| 62 | 1.7.1.1 | Создать механизм контроля дрейфа данных |  | 7d | 2026-03-25 | 2026-04-02 | 12, 33 |  | ML-инженер; Данные для обучения (Альфа-Банк); Тестовый сервер [1 1 сервер] | 56h | 94,600 |
| 63 | 1.7.1.2 | Создать возможность адаптивного обучения |  | 15d | 2026-04-03 | 2026-04-23 | 62 |  | Frontend-разработчик | 120h | 252,000 |
| 64 | 1.7.1.3 | Реализовать мониторинг проверки точности |  | 7d | 2026-04-24 | 2026-05-04 | 63 |  | API Альфа-Банка; ML-инженер; Данные для обучения (Альфа-Банк); Тестовый сервер [1 1 сервер] | 56h | 94,600 |
| 65 | 1.7.2 | **Тестирование сервиса** |  | 27d | 2026-05-05 | 2026-06-10 |  |  |  | 216h | 394,200 |
| 66 | 1.7.2.1 | Провести Unit-тестирование |  | 10d | 2026-05-05 | 2026-05-18 | 64, 58, 48, 33, 28, 23, 12 |  | QA-инженер; Облачный сервис Kubernets (Yandex Cloud); Тестовый сервер [1 1 сервер] | 80h | 145,000 |
| 67 | 1.7.2.2 | Провести интеграционные тесты |  | 10d | 2026-05-19 | 2026-06-01 | 66 |  | QA-инженер; Облачный сервис Kubernets (Yandex Cloud); Тестовый сервер [1 1 сервер] | 80h | 145,000 |
| 68 | 1.7.2.3 | Провести тестирование производительности |  | 7d | 2026-06-02 | 2026-06-10 | 67 |  | QA-инженер; Облачный сервис Kubernets (Yandex Cloud); Тестовый сервер [1 1 сервер] | 56h | 104,200 |
| 69 | 1.7.2 .4 | Система теститрования готова, тесты прошли успешно | milestone | 0d | 2026-06-10 | 2026-06-10 | 62, 63, 64, 66, 67, 68 | 64d |  |  |  |
| 70 | 1.8 | **Провести развертывание и ввод в эксплуатацию** |  | 40d | 2026-06-11 | 2026-08-05 |  |  |  | 824h | 1,625,600 |
| 71 | 1.8.1 | **Обеспечение DevOps инфраструктуры** |  | 12d | 2026-06-11 | 2026-06-26 |  |  |  | 208h | 449,600 |
| 72 | 1.8.1.1 | Провести контейнеризацию |  | 5d | 2026-06-11 | 2026-06-17 | 68 |  | DevOps-инженер; PROD-сервер [1 1 сервер]; Облачный сервис Kubernets (Yandex Cloud) | 40h | 118,000 |
| 73 | 1.8.1.2 | Промышленный запуск сервиса |  | 7d | 2026-06-18 | 2026-06-26 | 72, 99 |  | API Альфа-Банка; DevOps-инженер; PROD-сервер [1 1 сервер]; QA-инженер; Менеджер проекта; Облачный сервис Kubernets (Yandex Cloud) | 168h | 331,600 |
| 74 | 1.8.1 .3 | Промышленный запуск проекта прошёл успешно | milestone | 0d | 2026-06-26 | 2026-06-26 | 72, 73 | 52d |  |  |  |

| ID | WBS | Task | Type | Duration | Start | Finish | Predecessors | Total slack | Resources | Work | Cost |
| --- | --- | --- | --- | --- | --- | --- | --- | --- | --- | --- | --- |
| 75 | 1.8.2 | **Обучение пользователей** |  | 14d | 2026-06-29 | 2026-07-16 |  |  |  | 168h | 268,800 |
| 76 | 1.8.2.1 | Сформировать Инструкции для пользователей |  | 7d | 2026-06-29 | 2026-07-07 | 73 |  | QA-инженер | 56h | 95,200 |
| 77 | 1.8.2.2 | Получить обратную связь |  | 7d | 2026-07-08 | 2026-07-16 | 76 |  | QA-инженер; Менеджер проекта | 112h | 173,600 |
| 78 | 1.8.3 | **Поддержка релиза** |  | 28d | 2026-06-29 | 2026-08-05 |  |  |  | 448h | 907,200 |
| 79 | 1.8.3.1 | Обработка обратной связи |  | 14d | 2026-07-17 | 2026-08-05 | 77, 73 |  | QA-инженер; Менеджер проекта | 224h | 347,200 |
| 80 | 1.8.3.2 | Устранение ошибок |  | 28d | 2026-06-29 | 2026-08-05 | 73 |  | DevOps-инженер | 224h | 560,000 |
| 81 | 1.8.3 .3 | Релиз состоялся успешно, ошибки устранены | milestone | 0d | 2026-08-05 | 2026-08-05 | 76, 77, 79, 80 | 24d |  |  |  |
| 82 | 1.9 | **Закрытие проекта** |  | 24d | 2026-08-06 | 2026-09-08 |  |  |  | 232h | 345,600 |
| 83 | 1.9.1 | **Подготовка итоговой отчётности** |  | 14d | 2026-08-06 | 2026-08-25 |  |  |  | 112h | 156,800 |
| 84 | 1.9.1.1 | Собрать фактические данные о проекте |  | 7d | 2026-08-06 | 2026-08-14 | 80, 79 |  | Менеджер проекта | 56h | 78,400 |
| 85 | 1.9.1.2 | Сформировать и утвердить итоговый отчёт |  | 7d | 2026-08-17 | 2026-08-25 | 84 |  | Менеджер проекта | 56h | 78,400 |
| 86 | 1.9.2 | **Административное закрытие** |  | 10d | 2026-08-26 | 2026-09-08 |  |  |  | 120h | 188,800 |
| 87 | 1.9.2.1 | Провести финальное совещание |  | 1d | 2026-08-26 | 2026-08-26 | 85 |  | Backend-разработчик; DevOps-инженер; Frontend-разработчик; ML-инженер; QA-инженер; Менеджер проекта | 48h | 88,000 |
| 88 | 1.9.2.2 | Архивировать проектные материалы |  | 2d | 2026-08-27 | 2026-08-28 | 87 |  | Менеджер проекта | 16h | 22,400 |
| 89 | 1.9.2.3 | Завершить договорных и кадровых процедур |  | 7d | 2026-08-31 | 2026-09-08 | 88 |  | Менеджер проекта | 56h | 78,400 |
| 90 | 1.9.2 .4 | Проект закрыт | milestone | 0d | 2026-09-08 | 2026-09-08 | 84, 85, 87, 88, 89 |  |  |  |  |
| 91 | 1.10 | **Управление проектом** |  | 192d | 2025-12-15 | 2026-09-08 |  |  |  | 92.16h | 168,960 |
| 92 | 1.10.1 | Совещания |  | 192d | 2025-12-15 | 2026-09-08 |  |  |  |  |  |
| 93 | 1.10.1.1 | Ежедневные совещания |  | 192d | 2025-12-15 | 2026-09-08 |  |  | Backend-разработчик [1%]; DevOps-инженер [1%]; Frontend-разработчик [1%]; ML-инженер [1%]; QA-инженер [1%]; Менеджер проекта [1%] | 92.16h | 168,960 |
| 94 | 1.11 | **План реагирования на регуляторные и информационные риски** |  | 0d | 2025-12-15 | 2026-06-04 |  |  |  | 232h | 1,013,200 |
| 95 | 1.11.1 | Реестр данных, оснований обработки и требований |  | 40h | 2025-12-15 | 2025-12-19 |  |  | Менеджер проекта [40%]; QA-инженер [20%] | 24h | 126,000 |
| 96 | 1.11.2 | Правила хранения и проверяемое удаление данных |  | 32h | 2025-12-22 | 2025-12-25 | 95 |  | Backend-разработчик; QA-инженер [50%]; DevOps-инженер [25%] | 56h | 101,600 |
| 97 | 1.11.3 | Псевдонимизация и защита контуров данных |  | 40h | 2025-12-26 | 2026-01-01 | 95, 96 |  | Backend-разработчик; QA-инженер [60%]; DevOps-инженер [40%] | 80h | 148,800 |
| 98 | 1.11.4 | Регламент уведомлений и тренировка реагирования |  | 32h | 2025-12-22 | 2025-12-25 | 95 |  | Менеджер проекта [25%]; QA-инженер [25%]; DevOps-инженер [25%] | 24h | 44,800 |
| 99 | 1.11.5 | Комплексная приемка ИБ и проверка применимости требований |  | 24h | 2026-06-02 | 2026-06-04 | 97, 98, 67 |  | QA-инженер; DevOps-инженер [66.67%]; Менеджер проекта [33.33%] | 48h | 592,000 |

Notes:
- 94: Планируемые компенсирующие работы; фактические затраты и выполнение не зарегистрированы. Ставки исходного плана сохранены. 01.01.2026 является рабочим днём именно по исходному календарю: праздничные исключения отсутствуют. Резервы пока равны 0 и ожидают результатов модели.
- 95: ПЛАН, не факт. Добавлено при анализе рисков. Ресурсы и стандартные ставки взяты из исходного MPP; плановая работа распределена равномерно на заданную длительность.
- 96: ПЛАН, не факт. Добавлено при анализе рисков. Ресурсы и стандартные ставки взяты из исходного MPP; плановая работа распределена равномерно на заданную длительность.
- 97: ПЛАН, не факт. Добавлено при анализе рисков. Ресурсы и стандартные ставки взяты из исходного MPP; плановая работа распределена равномерно на заданную длительность.
- 98: ПЛАН, не факт. Добавлено при анализе рисков. Ресурсы и стандартные ставки взяты из исходного MPP; плановая работа распределена равномерно на заданную длительность.
- 99: ПЛАН, не факт. Добавлено при анализе рисков. Ресурсы и стандартные ставки взяты из исходного MPP; плановая работа распределена равномерно на заданную длительность.
